# FiberTel Infrastructure & Network Installation - WBS

Schedule from MS Project, 2016-02-22 to 2016-06-10, costs in $.
Syracuse University

## Calendars

- Standard: Mon-Fri 08:00-12:00, 13:00-17:00; Sat-Sun off.
- Swing Shift: Mon-Sun 15:00-19:00, 19:30-23:30.

## Resources

| Resource | Rate |
| --- | --- |
| Soham Khare | 45 |
| Bob T Adams | 35 |
| Mary J Ryan | 29 |
| Jessica A Thomas | 35 |
| PC Workstations with monitors and Software suite | 1750 |
| VoIP Handsets | 450 |
| Patch Cables | 240 |
| Cubicle Furniture | 1275 |
| Kyocera Network High speed copier/printer | 2950 |
| Cisco Wireless Access Points | 160 |
| Cisco ME 3400 Switch | 1765 |
| Wall Mount patch panel to be mounted at hub area | 150 |
| Network Wall Jacks | 240 |
| Network Cables | 265 |

## Schedule

| ID | WBS | Task | Duration | Start | Finish | Predecessors | Total slack | Free slack | Constraint | Deadline | Resources | Work | Cost |
| --- | --- | --- | --- | --- | --- | --- | --- | --- | --- | --- | --- | --- | --- |
| 1 | 1 | **FiberTel Infrastructure & Network Installation** | 79.25d | 2016-02-22 08:00 | 2016-06-10 10:00 |  | 121.75d |  |  | 2016-11-28 17:00 |  | 343.25h | 52,751.25 |
| 2 | 1.1 | **Initiate Project** | 2.75d | 2016-02-22 08:00 | 2016-02-24 15:00 |  | 198d |  |  |  |  | 32.5h | 1,174.5 |
| 3 | 1.1.1 | Kickoff Meeting | 1h | 2016-02-22 08:00 | 2016-02-22 09:00 |  | 200.88d |  |  |  | Bob T Adams; Jessica A Thomas; Mary J Ryan; Soham Khare [50%] | 3h | 99 |
| 4 | 1.1.2 | Meeting with Management, team and stakeholders | 3h | 2016-02-22 08:00 | 2016-02-22 11:00 |  | 200.62d |  |  |  | Soham Khare [50%]; Bob T Adams; Jessica A Thomas; Mary J Ryan | 10.5h | 364.5 |
| 5 | 1.1.3 | Develop Project Charter & Scope proposal | 10h | 2016-02-23 08:00 | 2016-02-24 10:00 |  | 197d | 0d | start no earlier than 2016-02-23 08:00 |  | Soham Khare [50%] | 5h | 225 |
| 6 | 1.1.4 | Review and approval of project charter | 4h | 2016-02-24 10:00 | 2016-02-24 15:00 | 5 | 197d | 0d | start no earlier than 2016-02-24 08:00 |  | Bob T Adams; Jessica A Thomas; Mary J Ryan; Soham Khare [50%] | 14h | 486 |
| 7 | 1.2 | Team Meeting for Project Plan | 1h | 2016-02-24 15:00 | 2016-02-24 16:00 | 6 | 197d | 0d |  |  | Bob T Adams; Jessica A Thomas; Mary J Ryan; Soham Khare [50%] | 3.5h | 121.5 |
| 8 | 1.3 | **Planning** | 3.38d | 2016-02-24 16:00 | 2016-03-01 10:00 |  | 194.75d |  |  |  |  | 39.75h | 1,523.75 |
| 9 | 1.3.1 | **Requirements Gathering** | 1.12d | 2016-02-24 16:00 | 2016-02-25 17:00 |  | 197d |  |  |  |  | 13.5h | 517.5 |
| 10 | 1.3.1.1 | Obtain input from Procurement Dept (FiberTel) on the preferred supplier and furniture | 2h | 2016-02-24 16:00 | 2016-02-25 09:00 | 7 | 197d | 0d |  |  | Bob T Adams; Soham Khare [50%] | 3h | 115 |
| 11 | 1.3.1.2 | Obtain client input(FiberTel) on the PCs and other network hardware | 3h | 2016-02-25 09:00 | 2016-02-25 12:00 | 10 | 197d | 0d | start no earlier than 2016-02-25 08:00 |  | Bob T Adams; Soham Khare [50%] | 4.5h | 172.5 |
| 12 | 1.3.1.3 | Obtain Client input (FiberTel) on the transition assistance to MetroTech for Operation Support System | 3h | 2016-02-25 13:00 | 2016-02-25 16:00 | 11 | 197d | 0d | start no earlier than 2016-02-25 08:00 |  | Bob T Adams; Soham Khare [50%] | 4.5h | 172.5 |
| 13 | 1.3.1.4 | Obtain client input for Adirondack's assets transferred into the new Office space | 1h | 2016-02-25 16:00 | 2016-02-25 17:00 | 12 | 197d |  | start no earlier than 2016-02-25 08:00 |  | Bob T Adams; Soham Khare [50%] | 1.5h | 57.5 |
| 14 | 1.3.2 | **Assessment of Requirements** | 2.25d | 2016-02-26 08:00 | 2016-03-01 10:00 |  | 194.75d |  |  |  |  | 26.25h | 1,006.25 |
| 15 | 1.3.2.1 | Determine Network Wiring Configuration | 4h | 2016-02-26 08:00 | 2016-02-26 12:00 |  | 196.5d |  | start no earlier than 2016-02-26 08:00 |  | Bob T Adams; Soham Khare [50%] | 6h | 230 |
| 16 | 1.3.2.2 | Verify Internet Access Systems Connectivity | 1h | 2016-02-26 08:00 | 2016-02-26 09:00 |  | 196.88d |  | start no earlier than 2016-02-26 08:00 |  | Bob T Adams; Soham Khare [50%] | 1.5h | 57.5 |
| 17 | 1.3.2.3 | Determine Furniture placement | 3h | 2016-02-29 08:00 | 2016-02-29 11:00 |  | 195.62d |  | start no earlier than 2016-02-29 08:00 |  | Bob T Adams; Soham Khare [50%] | 4.5h | 172.5 |
| 18 | 1.3.2.4 | Document specific networking requirements | 4h | 2016-02-29 08:00 | 2016-02-29 12:00 |  | 195.5d |  | start no earlier than 2016-02-29 08:00 |  | Bob T Adams; Soham Khare [50%] | 6h | 230 |
| 19 | 1.3.2.5 | Finalize design of new computer stations and Tables | 2h | 2016-03-01 08:00 | 2016-03-01 10:00 |  | 194.75d |  | start no earlier than 2016-03-01 08:00 |  | Bob T Adams; Soham Khare [50%] | 3h | 115 |
| 20 | 1.3.2.6 | Verify required software applications | 2h | 2016-03-01 08:00 | 2016-03-01 10:00 |  | 194.75d |  | start no earlier than 2016-03-01 08:00 |  | Bob T Adams; Soham Khare [50%] | 3h | 115 |
| 21 | 1.3.2.7 | Verify required network hardware and other peripheral equipment | 1.5h | 2016-03-01 08:00 | 2016-03-01 09:30 |  | 194.31d | 0d | start no earlier than 2016-03-01 08:00 |  | Bob T Adams; Soham Khare [50%] | 2.25h | 86.25 |
| 22 | 1.4 | Team Meeting for Procurement | 2h | 2016-03-01 09:30 | 2016-03-01 11:30 | 21 | 194.31d | 0d |  |  | Bob T Adams; Jessica A Thomas; Mary J Ryan; Soham Khare [50%] | 7h | 243 |
| 23 | 1.5 | **Procurement** | 40.5d | 2016-02-22 08:00 | 2016-04-18 12:00 |  | 160.5d |  |  |  |  | 32h | 41,800 |
| 24 | 1.5.1 | **Procurement Order prep** | 9.25d | 2016-02-22 08:00 | 2016-03-04 10:00 |  | 191.75d |  |  |  |  | 18h | 630 |
| 25 | 1.5.1.1 | Build list of required items | 2h | 2016-03-01 11:30 | 2016-03-01 14:30 | 22 | 194.31d |  | start no earlier than 2016-03-01 08:00 |  | Jessica A Thomas | 2h | 70 |
| 26 | 1.5.1.2 | Obtain cost quotations from vendors | 8h | 2016-03-02 08:00 | 2016-03-02 17:00 |  | 193d |  | start no earlier than 2016-03-02 08:00 |  | Jessica A Thomas | 8h | 280 |
| 27 | 1.5.1.3 | Refine and adjust project scope | 4h | 2016-02-22 08:00 | 2016-02-22 12:00 |  | 200.5d |  |  |  | Jessica A Thomas | 4h | 140 |
| 28 | 1.5.1.4 | Finalize Vendors for different products | 2h | 2016-03-04 08:00 | 2016-03-04 10:00 |  | 191.75d |  | start no earlier than 2016-03-04 08:00 |  | Jessica A Thomas | 2h | 70 |
| 29 | 1.5.1.5 | Determine purchasing and financing procedures | 2h | 2016-03-04 08:00 | 2016-03-04 10:00 |  | 191.75d |  | start no earlier than 2016-03-04 08:00 |  | Jessica A Thomas | 2h | 70 |

| ID | WBS | Task | Duration | Start | Finish | Predecessors | Total slack | Free slack | Constraint | Calendar | Resources | Work | Cost |
| --- | --- | --- | --- | --- | --- | --- | --- | --- | --- | --- | --- | --- | --- |
| 30 | 1.5.2 | **Place orders & Verify** | 31.5d | 2016-03-04 08:00 | 2016-04-18 12:00 |  | 159.88d |  |  |  |  | 13h | 41,135 |
| 31 | 1.5.2.1 | Issue purchase orders for Hardware | 2h | 2016-03-04 08:00 | 2016-03-04 10:00 |  | 190.62d | 15.75d | start no earlier than 2016-03-04 08:00 |  | Jessica A Thomas | 2h | 70 |
| 32 | 1.5.2.2 | Issue purchase orders for furniture | 3h | 2016-03-07 08:00 | 2016-03-07 11:00 |  | 187.44d | 29.62d | start no earlier than 2016-03-07 08:00 |  | Jessica A Thomas | 3h | 105 |
| 33 | 1.5.2.3 | Verify correctness of hardware orders | 4h | 2016-03-28 08:00 | 2016-03-28 12:00 | 31 | 174.88d | 17.5d | start no earlier than 2016-03-28 08:00 |  | Jessica A Thomas; Cisco ME 3400 Switch; Cisco Wireless Access Points [200%]; Kyocera Network High speed copier/printer; Network Cables; Network Wall Jacks; Patch Cables; PC Workstations with monitors and Software suite [1000%]; VoIP Handsets [1000%]; Wall Mount patch panel to be mounted at hub area | 4h | 28,070 |
| 34 | 1.5.2.4 | Verify correctness of furniture orders | 4h | 2016-04-18 08:00 | 2016-04-18 12:00 | 32 | 157.81d | 0d | start no earlier than 2016-04-18 08:00 |  | Jessica A Thomas; Cubicle Furniture [1000%] | 4h | 12,890 |
| 35 | 1.5.3 | Procure Linux Server from MetroTech | 1h | 2016-03-07 08:00 | 2016-03-07 09:00 |  | 190.88d |  | start no earlier than 2016-03-07 08:00 |  | Jessica A Thomas | 1h | 35 |
| 36 | 1.6 | Team Meeting for Execution | 2h | 2016-04-18 13:00 | 2016-04-18 15:00 | 34 | 157.81d | 0.25d |  |  | Bob T Adams; Jessica A Thomas; Mary J Ryan; Soham Khare [50%] | 7h | 243 |
| 37 | 1.7 | **Execution** | 30.62d | 2016-04-19 08:00 | 2016-05-31 14:00 |  | 129.38d |  |  |  |  | 141.5h | 4,823.5 |
| 38 | 1.7.1 | **Assemble Furniture & Hardware** | 2.38d | 2016-04-19 08:00 | 2016-04-21 11:00 |  | 157.44d |  |  |  |  | 52.5h | 1,696.5 |
| 39 | 1.7.1.1 | Place new furniture in Final Position | 8h | 2016-04-19 08:00 | 2016-04-19 17:00 | 34, 36 | 157.56d | 0d | start no earlier than 2016-04-19 08:00 |  | Jessica A Thomas; Mary J Ryan | 16h | 512 |
| 40 | 1.7.1.2 | Assemble and verify operation of 10 new PC workstations | 10h | 2016-04-20 08:00 | 2016-04-21 10:00 | 39, 36 | 157.56d | 22.75d |  |  | Jessica A Thomas; Mary J Ryan | 20h | 640 |
| 41 | 1.7.1.3 | Assemble and verify operation of 10 new VOIP handsets | 2.5h | 2016-04-21 08:00 | 2016-04-21 10:30 | 33, 36 | 157.38d | 23.69d | start no earlier than 2016-04-21 08:00 |  | Bob T Adams; Jessica A Thomas; Mary J Ryan | 7.5h | 247.5 |
| 42 | 1.7.1.4 | Assemble and test new scanner / printer | 3h | 2016-04-21 08:00 | 2016-04-21 11:00 | 33, 36 | 157.38d | 24.62d | start no earlier than 2016-04-21 08:00 |  | Bob T Adams; Jessica A Thomas; Mary J Ryan | 9h | 297 |
| 43 | 1.7.2 | **Install & connect network hardware** | 24d | 2016-04-20 08:00 | 2016-05-23 17:00 |  | 135d |  |  |  |  | 34h | 1,190 |
| 44 | 1.7.2.1 | Install Cisco ME 3400 switch | 1h | 2016-04-20 15:00 | 2016-04-20 16:00 |  | 222.12d |  | start no earlier than 2016-04-20 08:00 | Swing Shift | Bob T Adams | 1h | 35 |
| 45 | 1.7.2.2 | Connect system to local switch to core router | 1h | 2016-04-20 08:00 | 2016-04-20 09:00 |  | 158.88d |  | start no earlier than 2016-04-20 08:00 |  | Bob T Adams | 1h | 35 |
| 46 | 1.7.2.3 | Install network cabling in buildings cells and walls | 24h | 2016-04-21 15:00 | 2016-05-17 17:00 |  | 189d | 0.75d | start no earlier than 2016-04-21 08:00 | Swing Shift | Bob T Adams | 24h | 840 |
| 47 | 1.7.2.4 | Connect networks outlets and confirm connectivity | 6h | 2016-05-18 15:00 | 2016-05-20 17:00 | 46 | 189d | 2.75d | start no earlier than 2016-04-26 08:00 | Swing Shift | Bob T Adams | 6h | 210 |
| 48 | 1.7.2.5 | Connect network patch cables | 2h | 2016-05-23 15:00 | 2016-05-23 17:00 | 49 | 189d |  | start no earlier than 2016-03-21 08:00 | Swing Shift | Bob T Adams | 2h | 70 |
| 49 | 1.7.3 | Install Linux server for MetroTech | 5h | 2016-05-23 08:00 | 2016-05-23 14:00 | 47 | 135.12d | 0.12d | start no earlier than 2016-04-27 08:00 |  | Bob T Adams; Soham Khare [50%] | 7.5h | 287.5 |
| 50 | 1.7.4 | **Configure & Install the assembled hardware & software** | 5.62d | 2016-05-24 08:00 | 2016-05-31 14:00 |  | 129.38d |  |  |  |  | 45.5h | 1,579.5 |
| 51 | 1.7.4.1 | Configure and Test each individual PC workstation | 1.5h | 2016-05-24 08:00 | 2016-05-24 09:30 | 40 | 134.81d |  | start no earlier than 2016-05-24 08:00 |  | Bob T Adams; Jessica A Thomas; Mary J Ryan; Soham Khare [50%] | 5.25h | 182.25 |
| 52 | 1.7.4.2 | Configure and Test each individual VoIP handset | 2.5h | 2016-05-25 08:00 | 2016-05-25 10:30 | 41 | 133.69d |  | start no earlier than 2016-05-25 08:00 |  | Bob T Adams; Jessica A Thomas; Mary J Ryan; Soham Khare [50%] | 8.75h | 303.75 |
| 53 | 1.7.4.3 | Install and Test Copier/printer | 2h | 2016-05-26 08:00 | 2016-05-26 10:00 | 42 | 132.75d |  | start no earlier than 2016-05-26 08:00 |  | Bob T Adams; Jessica A Thomas; Mary J Ryan; Soham Khare [50%] | 7h | 243 |
| 54 | 1.7.4.4 | Install and configure Wireless Access points | 2h | 2016-05-27 15:00 | 2016-05-27 17:00 |  | 185d |  | start no earlier than 2016-05-27 08:00 | Swing Shift | Bob T Adams; Jessica A Thomas; Mary J Ryan; Soham Khare [50%] | 7h | 243 |
| 55 | 1.7.4.5 | Install required software on New PCs | 5h | 2016-05-31 08:00 | 2016-05-31 14:00 |  | 129.38d |  | start no earlier than 2016-05-31 08:00 |  | Bob T Adams; Jessica A Thomas; Mary J Ryan; Soham Khare [50%] | 17.5h | 607.5 |
| 56 | 1.7.5 | Cable Management | 2h | 2016-05-30 15:00 | 2016-05-30 17:00 |  | 179d | 0.75d | start no earlier than 2016-05-30 08:00 | Swing Shift | Bob T Adams | 2h | 70 |
| 57 | 1.8 | Team Meeting for Testing | 2h | 2016-05-31 08:00 | 2016-05-31 10:00 | 56 | 129.38d | 0.75d |  |  | Bob T Adams; Jessica A Thomas; Mary J Ryan; Soham Khare [50%] | 7h | 243 |

| ID | WBS | Task | Duration | Start | Finish | Predecessors | Total slack | Free slack | Constraint | Resources | Work | Cost |
| --- | --- | --- | --- | --- | --- | --- | --- | --- | --- | --- | --- | --- |
| 58 | 1.9 | **Testing** | 1.5d | 2016-06-01 08:00 | 2016-06-02 12:00 |  | 123.38d |  |  |  | 29h | 1,035 |
| 59 | 1.9.1 | Verify operation of Wired Network | 2h | 2016-06-01 08:00 | 2016-06-01 10:00 | 57 | 128.62d | 0d | start no earlier than 2016-06-01 08:00 | Bob T Adams; Jessica A Thomas; Mary J Ryan | 6h | 198 |
| 60 | 1.9.2 | Verify operation of Wireless Network | 1h | 2016-06-01 10:00 | 2016-06-01 11:00 | 59 | 128.62d |  | start no earlier than 2016-06-01 08:00 | Bob T Adams; Jessica A Thomas; Mary J Ryan | 3h | 99 |
| 61 | 1.9.3 | Test copier/printer for network connectivity | 1h | 2016-06-01 08:00 | 2016-06-01 09:00 |  | 128.88d |  | start no earlier than 2016-06-01 08:00 | Bob T Adams; Jessica A Thomas; Mary J Ryan | 3h | 99 |
| 62 | 1.9.4 | Test the functioning of the Linux server for MetroTech | 3h | 2016-06-01 08:00 | 2016-06-01 11:00 |  | 128.62d |  | start no earlier than 2016-06-01 08:00 | Bob T Adams; Soham Khare [50%] | 4.5h | 172.5 |
| 63 | 1.9.5 | Test the operation of the Cisco ME 3400 switch | 4h | 2016-06-02 08:00 | 2016-06-02 12:00 |  | 127.5d |  | start no earlier than 2016-06-02 08:00 | Bob T Adams; Soham Khare [50%] | 6h | 230 |
| 64 | 1.9.6 | Verify correct placement of furniture | 1h | 2016-06-02 08:00 | 2016-06-02 09:00 |  | 127.88d |  | start no earlier than 2016-06-02 08:00 | Jessica A Thomas; Mary J Ryan | 2h | 64 |
| 65 | 1.9.7 | Test network connectivity with FiberTel internal network | 3h | 2016-06-02 08:00 | 2016-06-02 11:00 |  | 122.38d | 0.62d | start no earlier than 2016-06-02 08:00 | Bob T Adams; Soham Khare [50%] | 4.5h | 172.5 |
| 66 | 1.10 | Team meeting for project closeout | 1h | 2016-06-03 08:00 | 2016-06-03 09:00 | 65 | 121.75d | 0d | start no earlier than 2016-06-03 08:00 | Bob T Adams; Jessica A Thomas; Mary J Ryan; Soham Khare [50%] | 3.5h | 121.5 |
| 67 | 1.11 | **Documentation and Training** | 5d | 2016-06-03 09:00 | 2016-06-10 09:00 |  | 121.75d |  |  |  | 40h | 1,400 |
| 68 | 1.11.1 | Develop written diagrams and documentation | 40h | 2016-06-03 09:00 | 2016-06-10 09:00 | 66 | 121.75d | 0d | start no earlier than 2016-06-02 08:00 | Jessica A Thomas | 40h | 1,400 |
| 69 | 1.12 | Project close meeting with Management & client | 1h | 2016-06-10 09:00 | 2016-06-10 10:00 | 68 | 121.75d |  |  | Soham Khare [50%] | 0.5h | 22.5 |
